# PM final project

Schedule from MS Project, 2023-06-05 to 2024-09-11.

## Calendars

- Home renovation: Mon-Fri 07:00-11:00, 13:00-16:00; Sat-Sun off. Exceptions (off unless hours are given): 2023-07-03 to 2023-07-04 (Independence day), 2023-09-04 (Labor day), 2023-10-31 (Halloween), 2023-11-23 to 2023-11-24 (Thanksgiving holiday), 2023-12-25 (Christmas), 2024-01-01 (New year), 2024-05-27 (Memorial day), 2024-07-04 (Independence day).

## Schedule

| ID | WBS | Task | Duration | Start | Finish | Predecessors | Total slack |
| --- | --- | --- | --- | --- | --- | --- | --- |
| 1 | 1 | **Pre-construction** | 61d | 2023-06-05 | 2023-09-13 |  | 0d |
| 2 | 1.1 | Review design/Blue prints | 5d | 2023-06-05 | 2023-06-12 |  | 0d |
| 3 | 1.2 | Contractor selection | 10d | 2023-06-12 | 2023-06-28 | 2 | 438d |
| 4 | 1.3 | Sub-Contractor Qualification & Selection | 20d | 2023-06-12 | 2023-07-17 | 2 | 0d |
| 5 | 1.4 | Review Building Permit Application | 5d | 2023-07-17 | 2023-07-25 | 4 | 0d |
| 6 | 1.5 | Submit Building Permit & wait for approval | 30d | 2023-07-25 | 2023-09-12 | 5 | 0d |
| 7 | 1.6 | Obtain building permit | 1d | 2023-09-12 | 2023-09-13 | 6 | 0d |
| 8 | 2 | **Request for quotes** | 15d | 2023-09-13 | 2023-10-06 |  | 0d |
| 9 | 2.1 | Foundation | 15d | 2023-09-13 | 2023-10-06 | 7 | 366d |
| 10 | 2.2 | Roofing | 15d | 2023-09-13 | 2023-10-06 | 7 | 366d |
| 11 | 2.3 | Lighting | 15d | 2023-09-13 | 2023-10-06 | 7 | 366d |
| 12 | 2.4 | HVAC(Heating & Air Conditioning) | 15d | 2023-09-13 | 2023-10-06 | 7 | 366d |
| 13 | 2.5 | Electrical | 15d | 2023-09-13 | 2023-10-06 | 7 | 366d |
| 14 | 2.6 | Flooring | 15d | 2023-09-13 | 2023-10-06 | 7 | 366d |
| 15 | 2.7 | Plumbing | 15d | 2023-09-13 | 2023-10-06 | 7 | 366d |
| 16 | 2.8 | Painting | 15d | 2023-09-13 | 2023-10-06 | 7 | 366d |
| 17 | 2.9 | Windows and Doors | 15d | 2023-09-13 | 2023-10-06 | 7 | 366d |
| 18 | 2.10 | Concrete | 15d | 2023-09-13 | 2023-10-06 | 7 | 366d |
| 19 | 2.11 | Building supplies(dry wall/lumber) | 15d | 2023-09-13 | 2023-10-06 | 7 | 366d |
| 20 | 2.12 | Kitchen & bath(Cabinets/counter tops) | 15d | 2023-09-13 | 2023-10-06 | 7 | 0d |
| 21 | 3 | **Review Quotes** | 10d? | 2023-10-09 | 2023-10-24 |  | 0d |
| 22 | 3.1 | Foundation | 10d? | 2023-10-09 | 2023-10-24 | 20 | 356d |
| 23 | 3.2 | Roofing | 10d | 2023-10-09 | 2023-10-24 | 20 | 356d |
| 24 | 3.3 | Lighting | 10d | 2023-10-09 | 2023-10-24 | 20 | 356d |
| 25 | 3.4 | HVAC(Heating & Air Conditioning) | 10d | 2023-10-09 | 2023-10-24 | 20 | 356d |
| 26 | 3.5 | Electrical | 10d | 2023-10-09 | 2023-10-24 | 20 | 356d |
| 27 | 3.6 | Flooring | 10d | 2023-10-09 | 2023-10-24 | 20 | 356d |
| 28 | 3.7 | Plumbing | 10d | 2023-10-09 | 2023-10-24 | 20 | 356d |
| 29 | 3.8 | Painting | 10d | 2023-10-09 | 2023-10-24 | 20 | 356d |
| 30 | 3.9 | Windows and Doors | 10d | 2023-10-09 | 2023-10-24 | 20 | 356d |
| 31 | 3.10 | Concrete | 10d | 2023-10-09 | 2023-10-24 | 20 | 356d |
| 32 | 3.11 | Building supplies(dry wall/lumber) | 10d | 2023-10-09 | 2023-10-24 | 20 | 356d |
| 33 | 3.12 | Kitchen & bath(Cabinets/counter tops) | 10d | 2023-10-09 | 2023-10-24 | 20 | 0d |
| 34 | 4 | Award Contracts | 1d? | 2023-10-24 | 2023-10-25 | 33 | 0d |

| ID | WBS | Task | Duration | Start | Finish | Predecessors | Total slack | Free slack |
| --- | --- | --- | --- | --- | --- | --- | --- | --- |
| 35 | 5 | **Fabrication & lead Time** | 40d | 2023-10-25 | 2024-01-04 |  | 0d |  |
| 36 | 5.1 | Foundation | 20d | 2023-10-25 | 2023-11-30 | 34 | 175d |  |
| 37 | 5.2 | Roofing | 25d | 2023-10-25 | 2023-12-08 | 34 | 170d |  |
| 38 | 5.3 | HVAC(Heating & Air Conditioning) | 30d | 2023-10-25 | 2023-12-15 | 34 | 165d |  |
| 39 | 5.4 | Electrical | 25d | 2023-10-25 | 2023-12-08 | 34 | 170d |  |
| 40 | 5.5 | Flooring | 40d | 2023-10-25 | 2024-01-04 | 34 | 155d |  |
| 41 | 5.6 | Plumbing | 30d | 2023-10-25 | 2023-12-15 | 34 | 165d |  |
| 42 | 5.7 | Painting | 20d | 2023-10-25 | 2023-11-30 | 34 | 175d |  |
| 43 | 5.8 | Windows and Doors | 40d | 2023-10-25 | 2024-01-04 | 34 | 155d |  |
| 44 | 5.9 | Concrete | 5d | 2023-10-25 | 2023-11-03 | 34 | 190d |  |
| 45 | 5.10 | Building supplies(dry wall/lumber) | 25d | 2023-10-25 | 2023-12-08 | 34 | 170d |  |
| 46 | 5.11 | Kitchen & bath(Cabinets/counter tops) | 40d | 2023-10-25 | 2024-01-04 | 34 | 0d |  |
| 47 | 6 | **Site work preparation** | 24d? | 2024-01-04 | 2024-02-12 |  | 0d |  |
| 48 | 6.1 | Survey & layout | 3d | 2024-01-04 | 2024-01-09 | 46 | 0d |  |
| 49 | 6.2 | Install work site fencing | 2d | 2024-01-09 | 2024-01-11 | 48 | 0d |  |
| 50 | 6.3 | Create erosion control barriers | 1d? | 2024-01-12 | 2024-01-15 | 49 | 0d |  |
| 51 | 6.4 | Excavate & Dig foundation for new home addition | 3d | 2024-01-15 | 2024-01-18 | 50 | 0d |  |
| 52 | 6.5 | Excavate & Dig footings for new garage expansion | 1d? | 2024-01-15 | 2024-01-16 | 50 | 148d |  |
| 53 | 6.6 | Demolition of home | 15d | 2024-01-18 | 2024-02-12 | 51 | 0d |  |
| 54 | 7 | **Construction** | 123d | 2024-02-12 | 2024-08-29 |  | 0d |  |
| 55 | 7.1 | Prepare home addition footings | 3d | 2024-02-12 | 2024-02-16 | 53 | 0d |  |
| 56 | 7.2 | Prepare garage addition footings | 2d | 2024-02-12 | 2024-02-14 | 53 | 114d | 0d |
| 57 | 7.3 | Build foundation for the new home addition | 5d | 2024-02-16 | 2024-02-23 | 55 | 0d |  |
| 58 | 7.4 | Build foundation for the new garage addition | 3d | 2024-02-15 | 2024-02-20 | 56 | 114d | 0d |
| 59 | 7.5 | Build wood frame structure of new home addition | 10d | 2024-02-23 | 2024-03-12 | 57 | 0d |  |
| 60 | 7.6 | Build wood frame structure of new garage addition | 5d | 2024-02-20 | 2024-02-28 | 58 | 114d | 0d |
| 61 | 7.7 | Frame interior walls for new rooms, closet and baths | 15d | 2024-03-12 | 2024-04-04 | 59 | 0d |  |
| 62 | 7.8 | Frame new front porch | 15d | 2024-04-04 | 2024-04-29 | 61 | 76d | 0d |

| ID | WBS | Task | Duration | Start | Finish | Predecessors | Total slack | Free slack |
| --- | --- | --- | --- | --- | --- | --- | --- | --- |
| 63 | 7.9 | **Interior finishes** | 75d | 2024-04-04 | 2024-08-06 |  | 0d |  |
| 64 | 7.9.1 | Install plumbing | 10d | 2024-04-04 | 2024-04-19 | 61 | 88d |  |
| 65 | 7.9.2 | Install Electrical | 10d | 2024-04-04 | 2024-04-19 | 61 | 0d |  |
| 66 | 7.9.3 | Install HVAC equipment(i.e heating and air conditioning) | 15d | 2024-04-19 | 2024-05-14 | 65 | 0d |  |
| 67 | 7.9.4 | Install walls and wall systems | 10d | 2024-05-15 | 2024-05-31 | 66 | 63d |  |
| 68 | 7.9.5 | Install dry wall | 10d | 2024-05-15 | 2024-05-31 | 66 | 0d |  |
| 69 | 7.9.6 | Install lighting | 5d | 2024-05-31 | 2024-06-10 | 68 | 58d |  |
| 70 | 7.9.7 | Install windows & doors | 10d | 2024-05-31 | 2024-06-17 | 68 | 0d |  |
| 71 | 7.9.8 | Paint walls/ceilings etc | 15d | 2024-06-17 | 2024-07-11 | 70 | 0d |  |
| 72 | 7.9.9 | Install kitchen and baths | 15d | 2024-07-12 | 2024-08-06 | 71 | 23d |  |
| 73 | 7.9.10 | Install flooring | 5d | 2024-07-12 | 2024-07-19 | 71 | 0d |  |
| 74 | 7.10 | **Exterior** | 113d | 2024-02-28 | 2024-08-29 |  | 8d |  |
| 75 | 7.10.1 | Install Garage doors | 2d | 2024-02-28 | 2024-03-01 | 60 | 114d | 0d |
| 76 | 7.10.2 | Install roof on home | 5d | 2024-07-19 | 2024-07-29 | 73 | 0d |  |
| 77 | 7.10.3 | Install garage roof | 3d | 2024-03-01 | 2024-03-06 | 75 | 114d | 0d |
| 78 | 7.10.4 | Finish front porch | 7d | 2024-04-29 | 2024-05-09 | 62 | 76d |  |
| 79 | 7.10.5 | Build back deck | 5d | 2024-07-29 | 2024-08-06 | 76 | 23d |  |
| 80 | 7.10.6 | Install rain gutters and downspouts on home | 5d | 2024-07-29 | 2024-08-06 | 76 | 0d |  |
| 81 | 7.10.7 | Install rain gutters and downspouts on garage | 2d | 2024-03-06 | 2024-03-11 | 77 | 114d |  |
| 82 | 7.10.8 | Perform final caulking around entire exterior | 3d | 2024-08-06 | 2024-08-09 | 80 | 0d |  |
| 83 | 7.10.9 | Install exterior lighting | 7d | 2024-08-09 | 2024-08-21 | 82 | 0d |  |
| 84 | 7.10.10 | Final grading, landscaping | 5d | 2024-08-21 | 2024-08-29 | 83 | 0d |  |
| 85 | 8 | **Final testing/Walk through** | 8d | 2024-08-29 | 2024-09-11 |  | 0d |  |
| 86 | 8.1 | Test Plumbing | 1d | 2024-08-29 | 2024-08-30 | 84 | 7d |  |
| 87 | 8.2 | Test electrical/ Lighting | 1d | 2024-08-29 | 2024-08-30 | 84 | 7d |  |
| 88 | 8.3 | Test HVAC &Mechanicals | 2d | 2024-08-29 | 2024-09-02 | 84 | 0d |  |
| 89 | 8.4 | Review "Punch List" of items | 2d | 2024-09-02 | 2024-09-04 | 88 | 4d |  |
| 90 | 8.5 | Complete/Fix Punch list of items | 5d | 2024-09-02 | 2024-09-10 | 88 | 0d |  |
| 91 | 8.6 | Obtain Certificate of Occupancy | 1d | 2024-09-10 | 2024-09-11 | 90 | 0d |  |
